# 21估算持续时间

Schedule from MS Project, 2020-03-20 to 2020-04-24, costs in ¥.

## Calendars

- 标准: Mon-Fri 08:00-12:00, 13:00-17:00; Sat-Sun off. Exceptions (off unless hours are given): 2020-03-21 08:00-12:00, 13:00-17:00, 2020-03-28 08:00-12:00, 13:00-17:00, 2020-04-04 to 2020-04-05 08:00-12:00, 13:00-17:00, 2020-04-12 08:00-12:00, 13:00-17:00.

## Resources

| Resource |
| --- |
| 项目经理 |
| UI设计师 |
| 技术专家 |
| 产品经理 |
| 测试专家 |
| 需求专家 |
| UI专家 |
| 质量专家 |
| 程序员1 |
| 程序员2 |
| 程序员3 |
| 测试员1 |
| 设计专家 |

## Schedule

| ID | WBS | Task | Type | Duration | Start | Finish | Predecessors | Total slack | Free slack | Constraint | Resources | Work | Cost |
| --- | --- | --- | --- | --- | --- | --- | --- | --- | --- | --- | --- | --- | --- |
| 1 | 1 | **启动** |  | 4d | 2020-03-20 | 2020-03-24 |  |  |  |  |  | 88h | 3,375 |
| 2 | 1.1 | 组建核心团队 |  | 1d | 2020-03-20 | 2020-03-20 |  | 3d | 1d |  | 项目经理; UI设计师; 技术专家; 产品经理; 测试专家; 需求专家; 质量专家 | 56h | 1,590 |
| 3 | 1.2 | 指定里程碑计划 |  | 1d | 2020-03-21 | 2020-03-21 |  | 28d | 0d | start no earlier than 2020-03-21 | 项目经理 | 8h | 510 |
| 4 | 1.3 | 分析干系人 |  | 1d | 2020-03-21 | 2020-03-21 |  | 28d | 0d | start no earlier than 2020-03-21 | 项目经理 | 8h | 510 |
| 5 | 1.4 | 制定项目章程 | manual | 1d | 2020-03-22 | 2020-03-22 | 2, 3, 4 |  |  | start no earlier than 2020-03-22 | 项目经理 | 8h | 510 |
| 6 | 1.5 | 开启项目启动大会 |  | 1d | 2020-03-23 | 2020-03-23 |  | 28d |  | start no earlier than 2020-03-23 | 项目经理 [50%]; 产品经理 [50%] | 8h | 255 |
| 7 | 2 | **规划** |  | 25d | 2020-03-24 | 2020-04-21 |  |  |  |  |  | 264h | 12,990 |
| 8 | 2.1 | **规划范围** |  | 14d | 2020-03-24 | 2020-04-07 |  |  |  |  |  | 152h | 6,240 |
| 9 | 2.1.1 | 制定需求说明书 |  | 5d | 2020-03-25 | 2020-03-30 |  | 0d |  | finish no earlier than 2020-03-30 | 需求专家 | 40h | 1,800 |
| 10 | 2.1.2 | 界面设计 |  | 5d | 2020-03-31 | 2020-04-04 | 9 | 0d |  | start no earlier than 2020-03-31 | UI专家 | 40h |  |
| 11 | 2.1.3 | 详细设计说明书 |  | 3d | 2020-03-31 | 2020-04-02 | 9 | 2d |  |  | 项目经理 | 24h | 1,470 |
| 12 | 2.1.4 | 范围说明书 |  | 3d | 2020-03-31 | 2020-04-02 | 9 | 2d |  | finish no earlier than 2020-04-01 | 项目经理 | 24h | 1,470 |
| 13 | 2.1.5 | 创建WBS |  | 2d | 2020-04-05 | 2020-04-06 | 10, 11, 12 | 0d |  | start no earlier than 2020-04-03 | 项目经理 | 16h | 990 |
| 14 | 2.1.6 | 形成范围基准 |  | 1d | 2020-04-07 | 2020-04-07 | 13 | 0d |  |  | 项目经理 | 8h | 510 |
| 15 | 2.2 | **规划时间** |  | 1d? | 2020-04-07 | 2020-04-08 |  | 2d | 1d |  |  | 32h | 2,070 |
| 16 | 2.2.1 | 排列工作包顺序 | milestone | 0d? | 2020-04-07 | 2020-04-07 | 14 | 2d | 0d |  | 项目经理 | 8h | 510 |
| 17 | 2.2.2 | 估算资源 | milestone | 0d? | 2020-04-07 | 2020-04-07 | 16 | 2d | 0d |  | 项目经理 | 8h | 510 |
| 18 | 2.2.3 | 估算持续时间 | milestone | 0d? | 2020-04-07 | 2020-04-07 | 17 | 10d | 0d |  | 项目经理 | 8h | 510 |
| 19 | 2.2.4 | 制定进度计划 |  | 1d? | 2020-04-07 | 2020-04-08 | 18 | 10d | 0d |  | 项目经理 | 8h | 510 |
| 20 | 2.2.5 | 形成进度基准 | milestone | 0d? | 2020-04-08 | 2020-04-08 | 19 | 10d |  |  | 项目经理 |  | 30 |
| 21 | 2.3 | **规划成本** |  | 1d | 2020-04-07 | 2020-04-07 |  |  |  |  |  |  | 90 |
| 22 | 2.3.1 | 项目成本估算 | milestone | 0d? | 2020-04-07 | 2020-04-07 |  | 1d | 0d | start no earlier than 2020-04-07 | 项目经理 |  | 30 |
| 23 | 2.3.2 | 项目预算 | milestone | 0d? | 2020-04-07 | 2020-04-07 | 22 | 1d | 0d |  | 项目经理 |  | 30 |
| 24 | 2.3.3 | 形成范围基准 | milestone | 0d? | 2020-04-07 | 2020-04-07 | 23 | 1d |  |  | 项目经理 |  | 30 |

| ID | WBS | Task | Type | Duration | Start | Finish | Predecessors | Total slack | Free slack | Constraint | Resources | Work | Cost |
| --- | --- | --- | --- | --- | --- | --- | --- | --- | --- | --- | --- | --- | --- |
| 25 | 2.4 | **规划质量** |  | 2d | 2020-04-08 | 2020-04-09 |  |  |  |  |  | 24h | 960 |
| 26 | 2.4.1 | 制定测试计划 |  | 2d? | 2020-04-08 | 2020-04-09 | 14 | 12d |  | start no earlier than 2020-04-08 | 质量专家 | 16h | 640 |
| 27 | 2.4.2 | 制定测试用例 | milestone | 0d? | 2020-04-08 | 2020-04-08 |  | 14d |  | start no earlier than 2020-04-08 | 质量专家 | 8h | 320 |
| 28 | 2.5 | **规划人力资源** |  | 1d? | 2020-04-07 | 2020-04-08 |  | 2d | 1d |  |  | 8h | 540 |
| 29 | 2.5.1 | 制定人力资源计划 |  | 1d | 2020-04-07 | 2020-04-08 | 17 | 2d | 0d |  | 项目经理 | 8h | 510 |
| 30 | 2.5.2 | 制定人员配备管理计划 | milestone | 0d? | 2020-04-08 | 2020-04-08 | 29 | 2d | 0d |  | 项目经理 |  | 30 |
| 31 | 2.6 | **规划沟通** |  | 2d | 2020-04-08 | 2020-04-10 |  |  |  |  |  |  | 30 |
| 32 | 2.6.1 | 制定沟通管理计划 | milestone | 0d? | 2020-04-08 | 2020-04-08 | 30 | 2d |  |  | 项目经理 |  | 30 |
| 33 | 2.7 | **规划采购** |  | 2d | 2020-04-07 | 2020-04-09 |  |  |  |  |  | 16h | 1,020 |
| 34 | 2.7.1 | 自制外购文件 | milestone | 0d? | 2020-04-07 | 2020-04-07 | 17 | 2d | 0d |  | 项目经理 | 8h | 510 |
| 35 | 2.7.2 | 制定采购文件 | milestone | 0d? | 2020-04-07 | 2020-04-07 | 34 | 2d |  |  | 项目经理 | 8h | 510 |
| 36 | 2.8 | **规划风险** |  | 4d | 2020-04-10 | 2020-04-14 |  | 5d |  |  |  | 32h | 2,040 |
| 37 | 2.8.1 | 识别风险 |  | 1d | 2020-04-10 | 2020-04-10 | 15, 21, 25, 28 | 5d | 0d | start no earlier than 2020-03-20 | 项目经理 | 8h | 510 |
| 38 | 2.8.2 | 风险分析 |  | 1d | 2020-04-12 | 2020-04-12 | 37 | 5d | 0d |  | 项目经理 | 8h | 510 |
| 39 | 2.8.3 | 制定风险登记册 |  | 1d | 2020-04-13 | 2020-04-13 | 38 | 5d | 0d |  | 项目经理 | 8h | 510 |
| 40 | 2.8.4 | 规划整合 |  | 1d | 2020-04-14 | 2020-04-14 | 39 | 5d |  |  | 项目经理 | 8h | 510 |
| 41 | 3 | **执行与监控** |  | 25d? | 2020-03-24 | 2020-04-22 |  |  |  |  |  | 832h | 38,080 |
| 42 | 3.1 | 组建项目团队 |  | 2d? | 2020-03-24 | 2020-03-25 |  | 2d | 0d | finish no earlier than 2020-03-25 | 项目经理; 测试员1 | 32h | 990 |
| 43 | 3.2 | **项目执行** |  | 22d | 2020-03-25 | 2020-04-17 |  |  |  |  |  | 288h | 23,040 |
| 44 | 3.2.1 | **用户模块** |  | 3d? | 2020-03-27 | 2020-03-30 | 42 | 2d | 0d |  |  | 32h | 2,560 |
| 45 | 3.2.1.1 | 注册 |  | 2d? | 2020-03-27 | 2020-03-28 |  | 17d | 0d | start no earlier than 2020-03-27 | 程序员1 | 16h | 1,280 |
| 46 | 3.2.1.2 | 登录 | manual | 1d | 2020-03-29 | 2020-03-29 |  |  |  |  | 程序员2 | 8h | 640 |
| 47 | 3.2.1.3 | 用户设置 |  | 1d | 2020-03-30 | 2020-03-30 | 45 | 15d |  | start no earlier than 2020-03-30 | 程序员1 | 8h | 640 |
| 48 | 3.2.2 | **今日习惯** |  | 11d | 2020-03-31 | 2020-04-10 |  | 0d |  |  |  | 88h | 7,040 |
| 49 | 3.2.2.1 | 打卡日记 | manual | 1d | 2020-03-31 | 2020-03-31 |  |  |  |  | 程序员2 | 8h | 640 |
| 50 | 3.2.2.2 | 打卡习惯 |  | 1d | 2020-04-01 | 2020-04-01 |  | 13d | 9d | finish no earlier than 2020-04-01 | 程序员1 | 8h | 640 |
| 51 | 3.2.2.3 | 打卡记录卡 | manual | 9d | 2020-04-02 | 2020-04-10 |  |  |  |  | 程序员3 | 72h | 5,760 |

| ID | WBS | Task | Type | Duration | Start | Finish | Predecessors | Total slack | Free slack | Constraint | Resources | Work | Cost |
| --- | --- | --- | --- | --- | --- | --- | --- | --- | --- | --- | --- | --- | --- |
| 52 | 3.2.3 | **习惯管理** |  | 5d | 2020-04-02 | 2020-04-06 | 42 |  |  |  | 程序员2 | 72h | 5,760 |
| 53 | 3.2.3.1 | 习惯管理 | manual | 4d | 2020-04-06 | 2020-04-09 |  |  |  | start no earlier than 2020-04-06 | 程序员3 | 32h | 2,560 |
| 54 | 3.2.3.2 | 习惯阅览 | milestone | 0d | 2020-04-10 | 2020-04-10 | 53 | 12d |  | start no earlier than 2020-04-10 | 程序员2 |  |  |
| 55 | 3.2.4 | **时钟模块** |  | 6d | 2020-04-11 | 2020-04-16 |  |  |  |  |  | 48h | 3,840 |
| 56 | 3.2.4.1 | 定时时钟 |  | 1d | 2020-04-12 | 2020-04-12 | 42 | 0d |  |  | 程序员3 | 8h | 640 |
| 57 | 3.2.4.2 | 番茄钟 |  | 3d | 2020-04-13 | 2020-04-15 | 56 | 0d |  | finish no earlier than 2020-04-14 | 程序员3 | 24h | 1,920 |
| 58 | 3.2.4.3 | 纯音乐 |  | 1d | 2020-04-16 | 2020-04-16 | 57 | 0d |  | finish no earlier than 2020-04-15 | 程序员3; 程序员1 | 16h | 1,280 |
| 59 | 3.2.5 | **管理模块** |  | 18d | 2020-03-31 | 2020-04-20 |  | 0d |  |  |  | 48h | 3,840 |
| 60 | 3.2.5.1 | 用户分析 | manual | 2d | 2020-03-31 | 2020-04-01 | 44 |  |  |  | 程序员1 | 16h | 1,280 |
| 61 | 3.2.5.2 | 打卡分析 | manual | 2d | 2020-04-12 | 2020-04-13 | 49, 50, 51 |  |  |  | 程序员2 | 16h | 1,280 |
| 62 | 3.2.5.3 | 时钟分析 | manual | 2d | 2020-04-17 | 2020-04-20 | 56, 57, 58 |  |  |  | 程序员3 | 16h | 1,280 |
| 63 | 3.3 | **项目监控** |  | 24d | 2020-03-25 | 2020-04-22 |  |  |  |  |  | 424h | 12,090 |
| 64 | 3.3.1 | 各项指标监控 |  | 23d | 2020-03-25 | 2020-04-20 |  | 2d | 0d | finish no earlier than 2020-04-20 | 测试员1; 项目经理 | 368h | 11,070 |
| 65 | 3.3.2 | 监控评审 |  | 1d | 2020-04-21 | 2020-04-21 | 64 | 1d | 0d |  | 设计专家; 项目经理 | 16h | 510 |
| 66 | 3.3.3 | 变更评审 |  | 1d | 2020-04-22 | 2020-04-22 | 65 | 1d | 0d | start no earlier than 2020-04-21 | 设计专家; 项目经理 | 16h | 510 |
| 67 | 3.3.4 | 例会 |  | 1d | 2020-04-23 | 2020-04-23 | 66 | 1d |  | start no earlier than 2020-04-22 | UI专家; 测试员1; 测试专家 | 24h |  |
| 68 | 3.4 | **管理干系人** |  | 3d | 2020-03-25 | 2020-03-28 |  |  |  |  |  | 24h | 1,530 |
| 69 | 3.4.1 | 发布项目信息 |  | 1d | 2020-03-26 | 2020-03-26 | 42 | 2d |  |  | 项目经理 | 8h | 510 |
| 70 | 3.4.2 | 报告监控指标 |  | 1d | 2020-03-26 | 2020-03-26 | 42 | 2d |  |  | 项目经理 | 8h | 510 |
| 71 | 3.4.3 | 干系人沟通 |  | 1d | 2020-03-26 | 2020-03-26 | 42 | 2d |  |  | 项目经理 | 8h | 510 |
| 72 | 3.5 | **团队建设** |  | 3d | 2020-03-25 | 2020-03-28 |  |  |  |  |  | 48h |  |
| 73 | 3.5.1 | 培训 |  | 1d | 2020-03-26 | 2020-03-26 | 42 | 2d |  |  | UI专家; 测试员1; 测试专家 | 24h |  |
| 74 | 3.5.2 | 娱乐活动 |  | 1d | 2020-03-26 | 2020-03-26 | 42 | 2d |  |  | UI专家; 测试员1; 测试专家 | 24h |  |
| 75 | 3.5.3 | 沟通 | milestone | 0d | 2020-03-25 | 2020-03-25 | 42 | 24d |  |  | UI专家; 测试员1; 测试专家 |  |  |
| 76 | 3.6 | 采购 | milestone | 0d | 2020-03-25 | 2020-03-25 | 42 | 24d |  |  | 项目经理 |  | 30 |
| 77 | 3.7 | 项目验收 |  | 1d | 2020-04-20 | 2020-04-20 | 43 | 2d | 1d |  | UI设计师; UI专家 | 16h | 400 |

| ID | WBS | Task | Duration | Start | Finish | Predecessors | Total slack | Constraint | Resources | Work | Cost |
| --- | --- | --- | --- | --- | --- | --- | --- | --- | --- | --- | --- |
| 78 | 4 | **收尾** | 3d | 2020-04-22 | 2020-04-24 |  |  |  |  | 40h | 1,310 |
| 79 | 4.1 | 项目终检 | 1d | 2020-04-22 | 2020-04-22 | 77 | 2d |  | UI设计师 | 8h | 400 |
| 80 | 4.2 | 结束采购 | 1d? | 2020-04-23 | 2020-04-23 | 77 | 1d | start no earlier than 2020-04-23 | 项目经理 | 8h | 510 |
| 81 | 4.3 | 项目内部收尾 | 1d | 2020-04-24 | 2020-04-24 |  | 0d | start no earlier than 2020-04-24 | UI设计师; 测试员1; 测试专家 | 24h | 400 |
